# GaleriaDevoto-SitioWeb-2014

Schedule from MS Project, 2014-05-19 to 2015-04-03, A marks actual dates.
Project para la construcción del sitio web para desktop y mobile (2014)

## Calendars

- Estándar: Mon-Fri 09:00-13:00, 15:00-19:00; Sat-Sun off. Exceptions (off unless hours are given): 2014-05-31 09:00-13:00, 15:00-19:00, 2014-06-07 09:00-13:00, 15:00-19:00.

## Resources

| Resource |
| --- |
| Miriam |
| Gustavo |
| Tamara |
| Dani |
| Gusta |
| Gonzalo |
| Tamara Miriam |
| Tamar |

## Schedule

| ID | WBS | Task | Duration | Start | Finish | Predecessors | Complete | Constraint | Resources | Work | Actual work |
| --- | --- | --- | --- | --- | --- | --- | --- | --- | --- | --- | --- |
| 1 | 1 | **Iteración 1** | 76.62d | 2014-05-19 09:00 A | 2014-08-29 16:00 A |  | 100% |  |  | 338h | 338h |
| 2 | 1.1 | Obtener listado completo de locales | 1h | 2014-05-19 09:00 A | 2014-05-19 10:00 A |  | 100% | start no earlier than 2014-05-19 09:00 | Miriam | 1h | 1h |
| 3 | 1.2 | Sacar fotos de locales | 6h | 2014-05-28 16:00 A | 2014-05-29 12:00 A |  | 100% | finish no earlier than 2014-05-28 18:00 | Gustavo | 6h | 6h |
| 4 | 1.3 | Sacar fotos de galería | 4h | 2014-05-28 12:00 A | 2014-05-28 18:00 A |  | 100% | finish no earlier than 2014-05-28 18:00 | Gustavo | 4h | 4h |
| 5 | 1.4 | Configurar el control de código | 1h | 2014-05-23 09:00 A | 2014-05-23 10:00 A |  | 100% | start no earlier than 2014-05-23 09:00 | Gustavo | 1h | 1h |
| 6 | 1.5 | Detectar user agent con asp.net y redirigir a sitio correcto | 2h | 2014-05-27 09:00 A | 2014-05-27 11:00 A |  | 100% | start no earlier than 2014-05-27 09:00 | Gustavo | 2h | 2h |
| 7 | 1.6 | Preparar el hosting Dattatec para funcionar con ASP.NET | 1h | 2014-05-27 09:00 A | 2014-05-27 10:00 A |  | 100% | start no earlier than 2014-05-27 09:00 | Gustavo | 1h | 1h |
| 8 | 1.7 | Corregir la calidad del logo | 1h | 2014-05-19 09:00 A | 2014-05-19 10:00 A |  | 100% |  | Tamara | 1h | 1h |
| 9 | 1.8 | Agregar Google Analytics en páginas que corresponde | 1h | 2014-05-19 09:00 A | 2014-05-19 10:00 A |  | 100% |  | Gustavo | 1h | 1h |
| 10 | 1.9 | Configurar redireccionamientos permanentes | 2h | 2014-05-19 09:00 A | 2014-05-19 11:00 A |  | 100% |  | Gustavo | 2h | 2h |
| 11 | 1.10 | Prueba UAT (Aceptación de usuario) | 1h | 2014-08-29 15:00 A | 2014-08-29 16:00 A | 14, 58, 60, 64 | 100% |  | Dani; Miriam; Tamara; Gustavo | 4h | 4h |
| 12 | 1.11 | Tomar snapshot de indicadores KPI (sitio web viejo) | 1h | 2014-08-28 09:00 A | 2014-08-28 10:00 A | 14 | 100% | start no earlier than 2014-05-21 09:00 | Gustavo | 1h | 1h |
| 13 | 1.12 | Actualizar documento de SEO | 1h | 2014-08-28 10:00 A | 2014-08-28 11:00 A | 12 | 100% | start no earlier than 2014-05-19 09:00 | Gustavo | 1h | 1h |
| 14 | 1.13 | **Construcción de nuevo sitio web desktop** | 75d | 2014-05-19 09:00 A | 2014-08-27 19:00 A |  | 100% |  |  | 292h | 292h |
| 15 | 1.13.1 | Realizar boceto de sitio web en programa de diseño gráfico | 3h | 2014-05-26 09:00 A | 2014-05-26 12:00 A |  | 100% | start no earlier than 2014-05-26 09:00 | Tamara | 3h | 3h |
| 16 | 1.13.2 | Definir colores | 3h | 2014-05-27 09:00 A | 2014-05-27 12:00 A |  | 100% | start no earlier than 2014-05-27 09:00 | Tamara | 3h | 3h |
| 17 | 1.13.3 | Definir tipo y tamaño de fuente | 1h | 2014-05-28 09:00 A | 2014-05-28 10:00 A |  | 100% | start no earlier than 2014-05-28 09:00 | Tamara | 1h | 1h |
| 18 | 1.13.4 | Definir resolución mínima sin scroll | 1h | 2014-05-29 09:00 A | 2014-05-29 10:00 A |  | 100% | start no earlier than 2014-05-29 09:00 | Gustavo; Tamara | 2h | 2h |
| 19 | 1.13.5 | Construir los iconos del menu | 3h | 2014-08-20 09:00 A | 2014-08-20 12:00 A |  | 100% | start no earlier than 2014-08-20 09:00 | Tamara | 3h | 3h |
| 20 | 1.13.6 | Construir un icono (favicon) | 1h | 2014-08-20 09:00 A | 2014-08-20 10:00 A |  | 100% | start no earlier than 2014-08-20 09:00 | Tamara | 1h | 1h |
| 21 | 1.13.7 | Prueba integral en navegadores | 8h | 2014-08-27 09:00 A | 2014-08-27 19:00 A | 22, 50 | 100% |  | Gustavo | 8h | 8h |
| 22 | 1.13.8 | **Páginas web principales** | 71d | 2014-05-19 09:00 A | 2014-08-21 19:00 A |  | 100% |  |  | 71h | 71h |
| 23 | 1.13.8.1 | **Home** | 60.5d | 2014-05-31 09:00 A | 2014-08-21 13:00 A |  | 100% |  |  | 18h | 18h |
| 24 | 1.13.8.1.1 | Definir título | 1h | 2014-08-20 09:00 A | 2014-08-20 10:00 A |  | 100% | start no earlier than 2014-08-20 09:00 | Gustavo; Dani | 2h | 2h |
| 25 | 1.13.8.1.2 | Definir descripción | 1h | 2014-08-20 09:00 A | 2014-08-20 10:00 A |  | 100% | start no earlier than 2014-08-20 09:00 | Gustavo; Dani | 2h | 2h |
| 26 | 1.13.8.1.3 | Definir contenido estático y dinámico | 3h | 2014-05-31 09:00 A | 2014-05-31 12:00 A |  | 100% | start no earlier than 2014-05-31 09:00 | Gustavo; Tamara | 6h | 6h |
| 27 | 1.13.8.1.4 | Construir MasterPage Principal | 4h | 2014-06-03 09:00 A | 2014-06-03 13:00 A | 26 | 100% | start no earlier than 2014-06-03 09:00 | Gustavo | 4h | 4h |
| 28 | 1.13.8.1.5 | Construir página | 4h | 2014-08-21 09:00 A | 2014-08-21 13:00 A | 27 | 100% | start no earlier than 2014-08-21 09:00 | Tamara | 4h | 4h |

| ID | WBS | Task | Duration | Start | Finish | Predecessors | Complete | Constraint | Resources | Work | Actual work |
| --- | --- | --- | --- | --- | --- | --- | --- | --- | --- | --- | --- |
| 29 | 1.13.8.2 | **Contacto** | 13.12d | 2014-05-19 09:00 A | 2014-06-04 10:00 A |  | 100% |  |  | 17h | 17h |
| 30 | 1.13.8.2.1 | Definir título | 1h | 2014-06-04 09:00 A | 2014-06-04 10:00 A |  | 100% | start no earlier than 2014-06-04 09:00 | Gustavo; Dani | 2h | 2h |
| 31 | 1.13.8.2.2 | Definir descripción | 1h | 2014-06-04 09:00 A | 2014-06-04 10:00 A |  | 100% | start no earlier than 2014-06-04 09:00 | Gustavo; Dani | 2h | 2h |
| 32 | 1.13.8.2.3 | Agregar la información que aparece en página ubicación | 2h | 2014-06-02 09:00 A | 2014-06-02 11:00 A |  | 100% | start no earlier than 2014-06-02 09:00 | Gustavo | 2h | 2h |
| 33 | 1.13.8.2.4 | Actualizar transporte público | 1h | 2014-06-02 09:00 A | 2014-06-02 10:00 A |  | 100% | start no earlier than 2014-06-02 09:00 | Gustavo | 1h | 1h |
| 34 | 1.13.8.2.5 | Agregar link a fan page Facebook | 1h | 2014-06-02 09:00 A | 2014-06-02 10:00 A |  | 100% | start no earlier than 2014-06-02 09:00 | Gustavo | 1h | 1h |
| 35 | 1.13.8.2.6 | Aclarar horarios de atención al público y de administración | 1h | 2014-06-02 09:00 A | 2014-06-02 10:00 A |  | 100% | start no earlier than 2014-06-02 09:00 | Gustavo | 1h | 1h |
| 36 | 1.13.8.2.7 | Construir página | 8h | 2014-05-19 09:00 A | 2014-05-19 19:00 A |  | 100% |  | Gustavo | 8h | 8h |
| 37 | 1.13.8.3 | **Villa Devoto** | 0.5d | 2014-08-20 09:00 A | 2014-08-20 13:00 A |  | 100% |  |  | 10h | 10h |
| 38 | 1.13.8.3.1 | Definir título | 1h | 2014-08-20 09:00 A | 2014-08-20 10:00 A |  | 100% | start no earlier than 2014-08-20 09:00 | Gustavo; Dani | 2h | 2h |
| 39 | 1.13.8.3.2 | Definir descripción | 1h | 2014-08-20 09:00 A | 2014-08-20 10:00 A |  | 100% | start no earlier than 2014-08-20 09:00 | Gustavo; Dani | 2h | 2h |
| 40 | 1.13.8.3.3 | Agregar direcciones de los lugares | 4h | 2014-08-20 09:00 A | 2014-08-20 13:00 A |  | 100% | start no earlier than 2014-08-20 09:00 | Gustavo | 4h | 4h |
| 41 | 1.13.8.3.4 | Construir página | 2h | 2014-08-20 09:00 A | 2014-08-20 11:00 A |  | 100% | start no earlier than 2014-08-20 09:00 | Gustavo | 2h | 2h |
| 42 | 1.13.8.4 | **Galeria Devoto** | 0.25d | 2014-08-20 09:00 A | 2014-08-20 11:00 A |  | 100% |  |  | 6h | 6h |
| 43 | 1.13.8.4.1 | Definir título | 1h | 2014-08-20 09:00 A | 2014-08-20 10:00 A |  | 100% | start no earlier than 2014-08-20 09:00 | Gustavo; Dani | 2h | 2h |
| 44 | 1.13.8.4.2 | Definir descripción | 1h | 2014-08-20 09:00 A | 2014-08-20 10:00 A |  | 100% | start no earlier than 2014-08-20 09:00 | Gustavo; Dani | 2h | 2h |
| 45 | 1.13.8.4.3 | Construir página | 2h | 2014-08-20 09:00 A | 2014-08-20 11:00 A |  | 100% | start no earlier than 2014-08-20 09:00 | Gustavo | 2h | 2h |
| 46 | 1.13.8.5 | **Locales** | 2d | 2014-08-20 09:00 A | 2014-08-21 19:00 A |  | 100% |  |  | 20h | 20h |
| 47 | 1.13.8.5.1 | Definir título | 1h | 2014-08-20 09:00 A | 2014-08-20 10:00 A |  | 100% | start no earlier than 2014-08-20 09:00 | Gustavo; Dani | 2h | 2h |
| 48 | 1.13.8.5.2 | Definir descripción | 1h | 2014-08-20 09:00 A | 2014-08-20 10:00 A |  | 100% | start no earlier than 2014-08-20 09:00 | Gustavo; Dani | 2h | 2h |
| 49 | 1.13.8.5.3 | Construir página | 16h | 2014-08-20 09:00 A | 2014-08-21 19:00 A |  | 100% | start no earlier than 2014-08-20 09:00 | Gustavo | 16h | 16h |
| 50 | 1.13.9 | **Página de cada local** | 74.25d | 2014-05-19 09:00 A | 2014-08-27 11:00 A |  | 100% |  |  | 200h | 200h |
| 51 | 1.13.9.1 | Obtener descripción detallada del local | 40h | 2014-05-19 09:00 A | 2014-05-23 19:00 A |  | 100% |  | Gustavo; Tamara; Miriam | 120h | 120h |
| 52 | 1.13.9.2 | Definir título | 4h | 2014-08-20 09:00 A | 2014-08-20 13:00 A |  | 100% | start no earlier than 2014-08-20 09:00 | Gustavo; Tamara; Dani | 12h | 12h |
| 53 | 1.13.9.3 | Definir estructura de página | 3h | 2014-06-05 09:00 A | 2014-06-05 12:00 A |  | 100% | start no earlier than 2014-06-05 09:00 | Gustavo; Tamara | 6h | 6h |
| 54 | 1.13.9.4 | Construir MasterPage Local | 4h | 2014-06-06 09:00 A | 2014-06-06 13:00 A | 53 | 100% | start no earlier than 2014-06-06 09:00 | Gustavo | 4h | 4h |
| 55 | 1.13.9.5 | Buscar un slider de imágenes y aprender a usarlo | 8h | 2014-06-07 09:00 A | 2014-06-07 19:00 A |  | 100% | start no earlier than 2014-06-07 09:00 | Gustavo | 8h | 8h |
| 56 | 1.13.9.6 | Cambiar el tamaño de las imágenes del slider a 640x300 px | 8h | 2014-05-19 09:00 A | 2014-05-19 19:00 A |  | 100% |  | Tamara | 8h | 8h |
| 57 | 1.13.9.7 | Construir páginas | 42h | 2014-08-20 09:00 A | 2014-08-27 11:00 A | 54 | 100% | start no earlier than 2014-06-07 09:00 | Tamara | 42h | 42h |

| ID | WBS | Task | Duration | Start | Finish | Predecessors | Complete | Total slack | Constraint | Resources | Work | Actual work |
| --- | --- | --- | --- | --- | --- | --- | --- | --- | --- | --- | --- | --- |
| 58 | 1.14 | **Construcción de nuevo sitio web mobile** | 0.5d | 2014-08-28 09:00 A | 2014-08-28 13:00 A | 14 | 100% |  |  |  | 12h | 12h |
| 59 | 1.14.1 | Prueba integral en navegadores mobile | 4h | 2014-08-28 09:00 A | 2014-08-28 13:00 A |  | 100% |  | start no earlier than 2014-07-04 09:00 | Gustavo; Tamara; Miriam | 12h | 12h |
| 60 | 1.15 | **Actualización de datos en Google Places** | 0.25d | 2014-05-19 09:00 A | 2014-05-19 11:00 A |  | 100% |  |  |  | 5h | 5h |
| 61 | 1.15.1 | Pedir descripción principal de ficha | 2h | 2014-05-19 09:00 A | 2014-05-19 11:00 A |  | 100% |  |  | Gustavo | 2h | 2h |
| 62 | 1.15.2 | Sacar el télefono de la ficha | 1h | 2014-05-19 09:00 A | 2014-05-19 10:00 A |  | 100% |  |  | Gustavo | 1h | 1h |
| 63 | 1.15.3 | Dar de alta ficha e investigar perfil de Google + | 2h | 2014-05-19 09:00 A | 2014-05-19 11:00 A |  | 100% |  |  | Gustavo | 2h | 2h |
| 64 | 1.16 | **Fan page Facebook** | 0.25d | 2014-08-28 15:00 A | 2014-08-28 17:00 A | 58 | 100% |  |  |  | 4h | 4h |
| 65 | 1.16.1 | Subir Fotos | 1h | 2014-08-28 15:00 A | 2014-08-28 16:00 A |  | 100% |  |  | Tamara | 1h | 1h |
| 66 | 1.16.2 | Escribir descripción y proposito de fan page | 1h | 2014-08-28 15:00 A | 2014-08-28 16:00 A |  | 100% |  | start no earlier than 2014-07-08 09:00 | Tamara | 1h | 1h |
| 67 | 1.16.3 | Comentar a Gonzalo el proposito de la fan page | 2h | 2014-08-28 15:00 A | 2014-08-28 17:00 A |  | 100% |  | start no earlier than 2014-07-09 09:00 | Gustavo | 2h | 2h |
| 68 | 2 | **Iteración 2** | 90d? | 2014-12-01 09:00 | 2015-04-03 19:00 | 64 |  | 0d |  |  | 462h |  |
| 69 | 2.1 | Validar código HTML | 8h? | 2015-01-05 09:00 | 2015-01-05 19:00 |  |  | 63.5d | start no earlier than 2015-01-05 09:00 | Gustavo | 8h |  |
| 70 | 2.2 | Validar código CSS | 8h? | 2015-01-12 09:00 | 2015-01-12 19:00 |  |  | 58.5d | start no earlier than 2015-01-12 09:00 | Gustavo | 8h |  |
| 71 | 2.3 | Agregar validaciones HTML y CSS exitosas al sitio web | 4h? | 2015-01-19 09:00 | 2015-01-19 13:00 | 69, 70 |  | 54.5d | start no earlier than 2015-01-19 09:00 | Tamara | 4h |  |
| 72 | 2.4 | Agregar sitio a Yelp | 8h? | 2015-01-26 09:00 | 2015-01-26 19:00 | 58 |  | 49d | start no earlier than 2015-01-26 09:00 | Gustavo | 8h |  |
| 73 | 2.5 | Mejorar la velocidad de descarga de la página de contacto | 8h? | 2015-03-02 09:00 | 2015-03-02 19:00 |  |  | 24d | start no earlier than 2015-03-02 09:00 | Gustavo | 8h |  |
| 74 | 2.6 | Agregar código postal a la página de contacto | 8h? | 2014-12-01 09:00 | 2014-12-01 19:00 |  |  | 65d | start no earlier than 2014-12-01 09:00 | Tamara | 8h |  |
| 75 | 2.7 | Eliminar codigo JavaScript y CSS no utilizado | 8h? | 2015-03-02 09:00 | 2015-03-02 19:00 |  |  | 24d | start no earlier than 2015-03-02 09:00 | Gustavo | 8h |  |
| 76 | 2.8 | **Locales** | 65d? | 2015-01-05 09:00 | 2015-04-03 19:00 |  |  | 0d |  |  | 384h |  |
| 77 | 2.8.1 | Completar páginas de cada local | 40h? | 2015-03-09 09:00 | 2015-03-13 19:00 |  |  | 15d | start no earlier than 2015-03-09 09:00 | Gustavo | 40h |  |
| 78 | 2.8.2 | Agregar los locales relacionados en la página de cada local | 8h? | 2015-03-09 09:00 | 2015-03-09 19:00 |  |  | 19d | start no earlier than 2015-03-09 09:00 | Gustavo; Tamara | 16h |  |
| 79 | 2.8.3 | Obtener productos promocionados por local | 40h? | 2015-01-05 09:00 | 2015-01-09 19:00 |  |  | 60d | start no earlier than 2015-01-05 09:00 | Gustavo; Tamara; Miriam | 120h |  |
| 80 | 2.8.4 | Definir meta description de cada local | 40h? | 2015-03-23 09:00 | 2015-03-27 19:00 |  |  | 5d | start no earlier than 2015-03-23 09:00 | Gustavo; Tamara; Dani | 120h |  |
| 81 | 2.8.5 | Agregar el listado alfabetico de locales | 8h? | 2015-03-16 09:00 | 2015-03-16 19:00 |  |  | 14d | start no earlier than 2015-03-16 09:00 | Gustavo | 8h |  |
| 82 | 2.8.6 | Agregar secciones "Productos" y "Medios de pago" | 40h? | 2015-03-30 09:00 | 2015-04-03 19:00 |  |  | 0d | start no earlier than 2015-03-30 09:00 | Gustavo; Tamara | 80h |  |
| 83 | 2.9 | Subir promociones a Facebook | 8h? | 2015-01-05 09:00 | 2015-01-05 19:00 |  |  | 64d | start no earlier than 2015-01-05 09:00 | Gonzalo; Tamara | 16h |  |

| ID | WBS | Task | Duration | Start | Finish | Predecessors | Total slack | Constraint | Resources | Work |
| --- | --- | --- | --- | --- | --- | --- | --- | --- | --- | --- |
| 84 | 2.10 | **Error 404 (Not Found)** | 0.75d? | 2015-01-05 09:00 | 2015-01-05 17:00 |  | 64.25d |  |  | 10h |
| 85 | 2.10.1 | Definir estructura | 4h? | 2015-01-05 09:00 | 2015-01-05 13:00 |  | 64.25d | start no earlier than 2015-01-05 09:00 | Tamara | 4h |
| 86 | 2.10.2 | Definir imagen | 2h? | 2015-01-05 09:00 | 2015-01-05 11:00 |  | 64.5d | start no earlier than 2015-01-05 09:00 | Tamara | 2h |
| 87 | 2.10.3 | Definir texto | 2h? | 2015-01-05 09:00 | 2015-01-05 11:00 |  | 64.5d | start no earlier than 2015-01-05 09:00 | Tamara | 2h |
| 88 | 2.10.4 | Construir página | 2h? | 2015-01-05 15:00 | 2015-01-05 17:00 | 85, 86, 87 | 64.25d | start no earlier than 2015-01-05 09:00 | Tamara | 2h |
